Schedule from MS Project, 2025-09-01 to 2026-05-20, 24 hours a day, costs in $, A marks actual dates.

## Calendars

- IntelliMeet calender: Mon-Sat 08:00-20:00; Sun off.

## Resources

| Resource | Rate |
| --- | --- |
| Mustafa Masood | 10 |
| Laiba Fatima | 10 |

## Schedule

| ID | WBS | Task | Duration | Start | Finish | Predecessors | Complete | Remaining | Baseline start | Baseline finish | Baseline duration | Total slack | Resources | Work | Actual work | Cost | Actual cost |
| --- | --- | --- | --- | --- | --- | --- | --- | --- | --- | --- | --- | --- | --- | --- | --- | --- | --- |
| 1 | 0 | **IntelliMeet Pro** | 112.12d | 2025-09-01 A | 2026-05-20 |  | 29% | 79.69d | 2025-09-01 | 2026-05-25 | 267d | 0d |  | 3934.51h | 967h | 39,345.14 | 9,670 |
| 2 | 1 | **Phase 1: Requirements Analysis** | 19.38d | 2025-09-01 A | 2025-10-15 A |  | 100% |  | 2025-09-01 | 2025-10-15 | 44.71d |  |  | 646h | 646h | 6,460 | 6,460 |
| 3 | 1.1 | Stakeholder Meetings & Requirement Gathering | 7.88d | 2025-09-01 A | 2025-09-18 A |  | 100% |  | 2025-09-01 | 2025-09-19 | 18.71d |  | Mustafa Masood | 189h | 189h | 1,890 | 1,890 |
| 4 | 1.2 | FYP Proposal Draft | 1.38d | 2025-09-19 A | 2025-09-22 A | 3 | 100% |  | 2025-09-20 | 2025-09-22 | 2.71d |  | Laiba Fatima; Mustafa Masood | 66h | 66h | 660 | 660 |
| 5 | 1.3 | Proposal Defense Presentation | 0.33d | 2025-09-23 A | 2025-09-23 A | 4 | 100% |  | 2025-09-23 | 2025-09-23 | 0.33d |  | Laiba Fatima; Mustafa Masood | 16h | 16h | 160 | 160 |
| 6 | 1.4 | Literature Review & Feasibility Study | 2.88d | 2025-09-24 A | 2025-09-30 A | 5 | 100% |  | 2025-09-24 | 2025-09-30 | 6.71d |  | Laiba Fatima | 69h | 69h | 690 | 690 |
| 7 | 1.5 | SRS Document Drafting & Finalization | 6.38d | 2025-10-01 A | 2025-10-15 A | 6 | 100% |  | 2025-10-01 | 2025-10-15 | 14.71d |  | Laiba Fatima; Mustafa Masood | 306h | 306h | 3,060 | 3,060 |
| 8 | 2 | **Phase 2: System Design** | 23.75d | 2025-10-16 A | 2025-12-10 | 2 | 57% | 10.3d | 2025-10-16 | 2025-12-10 | 55.71d | 0d |  | 657.51h | 321h | 6,575.14 | 3,210 |
| 9 | 2.1 | Architecture Design | 5d | 2025-10-16 A | 2025-10-27 A |  | 100% |  | 2025-10-16 | 2025-10-27 | 11.71d |  | Mustafa Masood | 120h | 120h | 1,200 | 1,200 |
| 10 | 2.2 | ERD & Database Schema Design | 6.88d | 2025-10-28 A | 2025-11-12 A | 9 | 100% |  | 2025-10-28 | 2025-11-12 | 15.71d |  | Laiba Fatima | 165h | 165h | 1,650 | 1,650 |
| 11 | 2.3 | Wireframes & UI/UX Prototypes | 5.88d | 2025-11-13 A | 2025-11-26 | 10 | 26% | 4.38d | 2025-11-13 | 2025-11-26 | 13.71d | 0d | Laiba Fatima | 90.51h | 36h | 905.14 | 360 |
| 12 | 2.4 | SDS Document Drafting & Finalization | 5.88d | 2025-11-26 | 2025-12-10 | 11 |  |  | 2025-11-26 | 2025-12-10 | 14d | 0d | Laiba Fatima; Mustafa Masood | 282h |  | 2,820 |  |
| 13 | 3 | **Phase 3: Implementation** | 43.88d | 2025-12-10 | 2026-03-23 | 8 |  |  | 2025-12-13 | 2026-03-25 | 103d | 0d |  | 1908h |  | 19,080 |  |
| 14 | 3.1 | Authentication & Scheduling Module | 11d | 2025-12-10 | 2026-01-05 |  |  |  | 2025-12-13 | 2026-01-05 | 24d | 0d | Laiba Fatima; Mustafa Masood | 528h |  | 5,280 |  |
| 15 | 3.2 | AI Transcription & Diarization Module | 8.88d | 2026-01-05 | 2026-01-26 | 14 |  |  | 2026-01-06 | 2026-01-26 | 21d | 0d | Laiba Fatima; Mustafa Masood | 426h |  | 4,260 |  |
| 16 | 3.3 | Summarization & Action Items Module | 8.38d | 2026-01-26 | 2026-02-13 | 15 |  |  | 2026-01-27 | 2026-02-15 | 20d | 0d | Laiba Fatima; Mustafa Masood | 402h |  | 4,020 |  |
| 17 | 3.4 | Semantic Search & Workflow Integrations | 7.38d | 2026-02-14 | 2026-03-03 | 16 |  |  | 2026-02-16 | 2026-03-04 | 17d | 0d | Laiba Fatima; Mustafa Masood | 354h |  | 3,540 |  |
| 18 | 3.5 | Slack Bot, Bilingual Support | 4.88d | 2026-03-03 | 2026-03-14 | 17 |  |  | 2026-03-06 | 2026-03-17 | 12d | 0d | Mustafa Masood | 117h |  | 1,170 |  |
| 19 | 3.6 | UI/UX, Payment & Notifications | 3.38d | 2026-03-14 | 2026-03-23 | 18 |  |  | 2026-03-18 | 2026-03-25 | 8d | 0d | Laiba Fatima | 81h |  | 810 |  |
| 20 | 4 | **Phase 4: Integration & Testing** | 15.12d | 2026-03-23 | 2026-04-27 | 13 |  |  | 2026-03-26 | 2026-04-30 | 36d | 0d |  | 363h |  | 3,630 |  |
| 21 | 4.1 | Module Integration & System Assembly | 4.38d | 2026-03-23 | 2026-04-01 |  |  |  | 2026-03-26 | 2026-04-05 | 11d | 0d | Mustafa Masood | 105h |  | 1,050 |  |
| 22 | 4.2 | System Testing (Functional, QA, Scalability) | 6.38d | 2026-04-02 | 2026-04-16 | 21 |  |  | 2026-04-06 | 2026-04-20 | 15d | 0d | Laiba Fatima | 153h |  | 1,530 |  |
| 23 | 4.3 | Final Debugging & Optimization | 4.38d | 2026-04-16 | 2026-04-27 | 22 |  |  | 2026-04-21 | 2026-04-30 | 10d | 0d | Mustafa Masood | 105h |  | 1,050 |  |
| 24 | 5 | **Phase 5: Deployment** | 6.62d | 2026-04-27 | 2026-05-12 | 20 |  |  | 2026-05-01 | 2026-05-16 | 16d | 0d |  | 204h |  | 2,040 |  |
| 25 | 5.1 | Deployment to Cloud Infrastructure | 1.38d | 2026-04-27 | 2026-04-30 |  |  |  | 2026-05-01 | 2026-05-04 | 4d | 0d | Mustafa Masood | 33h |  | 330 |  |
| 26 | 5.2 | Final Documentation (User Manual, Technical Report) | 3.38d | 2026-04-30 | 2026-05-07 | 25 |  |  | 2026-05-06 | 2026-05-12 | 7d | 0d | Laiba Fatima | 81h |  | 810 |  |
| 27 | 5.3 | Stakeholder Training & Internal Demo | 1.88d | 2026-05-08 | 2026-05-12 | 26 |  |  | 2026-05-14 | 2026-05-16 | 3d | 0d | Laiba Fatima; Mustafa Masood | 90h |  | 900 |  |

| ID | WBS | Task | Duration | Start | Finish | Predecessors | Baseline start | Baseline finish | Baseline duration | Total slack | Resources | Work | Cost |
| --- | --- | --- | --- | --- | --- | --- | --- | --- | --- | --- | --- | --- | --- |
| 28 | 6 | **Phase 6: Final Evaluation & Presentation** | 3.25d | 2026-05-12 | 2026-05-20 | 24 | 2026-05-17 | 2026-05-25 | 9d | 0d |  | 156h | 1,560 |
| 29 | 6.1 | Open House Preparation & Public Demo | 1.38d | 2026-05-12 | 2026-05-15 |  | 2026-05-17 | 2026-05-20 | 4d | 0d | Laiba Fatima; Mustafa Masood | 66h | 660 |
| 30 | 6.2 | Final Defense, Viva & Report Submission | 1.88d | 2026-05-15 | 2026-05-20 | 29 | 2026-05-21 | 2026-05-25 | 5d | 0d | Laiba Fatima; Mustafa Masood | 90h | 900 |
